# STO project

How a schedule from a web Gantt chart changed from version to version. A marks actual dates.

## Version 1 (saved 2024-07-24)

| ID | WBS | Task | Duration | Start | Finish | Predecessors | Complete |
| --- | --- | --- | --- | --- | --- | --- | --- |
| 2 | 1 | **AUTO EARN OPTIMIZATION PLAN** | 23d | 2024-07-24 | 2024-08-23 |  | 8% |
| 3 | 1.1 | **Auto earn optimizations** | 14d | 2024-07-24 | 2024-08-12 |  | 8% |
| 4 |  | FP invoice API update (WCHAT-14420) | 1d | 2024-07-24 | 2024-07-24 |  | 100% |
| 5 |  | Points Posting Failure Handling (WCHAT-15359) | 6d | 2024-07-24 | 2024-07-31 |  |  |
| 6 |  | SIT for 14420&15359 | 2d | 2024-08-01 | 2024-08-02 | 5 |  |
| 7 |  | UAT for 14420&15359 | 2d | 2024-08-05 | 2024-08-06 | 6 |  |
| 8 |  | Release for 14420&15359 | 1d | 2024-08-12 | 2024-08-12 |  |  |
| 9 | 1.2 | **FP certification** | 23d | 2024-07-24 | 2024-08-23 |  |  |
| 10 |  | Execute FP test case | 2d | 2024-08-08 | 2024-08-09 |  |  |
| 11 |  | Submit FP test case | 1d | 2024-08-12 | 2024-08-12 |  |  |
| 12 |  | Review test case & back and forth | 9d | 2024-08-13 | 2024-08-23 |  |  |
| 13 |  | Prepare documents | 8d | 2024-07-24 | 2024-08-02 |  |  |
| 14 |  | Submit and review documents | 10d | 2024-08-05 | 2024-08-16 |  |  |
| 15 | 2 | **E2E** | 3d | 2024-08-28 | 2024-08-30 |  |  |
| 16 |  | Verification on Simphony hotel | 3d | 2024-08-28 | 2024-08-30 |  |  |
| 17 |  | Verification on Infrasys hotel | 1d | 2024-08-28 | 2024-08-28 |  |  |

## Version 2 (saved 2024-07-24)

Last finish stays 2024-08-30. Complete tasks 1 → 4.

Added:

| ID | Task | Duration | Start | Finish | Predecessors |
| --- | --- | --- | --- | --- | --- |
| 2 | **R1.41** | 20d | 2024-07-03 | 2024-07-30 |  |
| 3 | R1.41 DEV | 8d | 2024-07-03 | 2024-07-12 |  |
| 4 | R1.41 SIT | 6d | 2024-07-15 | 2024-07-22 | 3 |
| 5 | R1.41 UAT | 4d | 2024-07-23 | 2024-07-26 | 4 |
| 6 | R1.41 Release | 1d | 2024-07-30 | 2024-07-30 |  |
| 7 | **R1.41.1** | 29d | 2024-07-03 | 2024-08-12 |  |
| 8 | R1.41.1 DEV | 21d | 2024-07-03 | 2024-07-31 |  |
| 9 | R1.41.1 SIT | 2d | 2024-08-01 | 2024-08-02 | 8 |
| 10 | R1.41.1 UAT | 3d | 2024-08-05 | 2024-08-07 | 9 |
| 11 | R1.41.1 Release | 1d | 2024-08-12 | 2024-08-12 |  |
| 28 | **Other optimizations** | 19d | 2024-08-01 | 2024-08-27 |  |
| 29 | Add Inline Label for Auto Earn Related Configuration (WCHAT-14795) | 19d | 2024-08-01 | 2024-08-27 |  |
| 30 | Request From Loyalty MKT_HP Wording Change (WCHAT-14335) | 19d | 2024-08-01 | 2024-08-27 |  |
| 31 | Request From Loyalty MKT_Order Confirmation Page Wording Change (WCHAT-14336) | 19d | 2024-08-01 | 2024-08-27 |  |
| 32 | **CASH COUPON** | 31d | 2024-07-01 | 2024-08-12 |  |
| 33 | **Delivery** | 31d | 2024-07-01 | 2024-08-12 |  |
| 34 | Tech design for cash coupon promotion code (balance the books) | 14d | 2024-07-01 | 2024-07-18 |  |
| 35 | Development for using promo code to balance the books(R1.41.1) | 9d | 2024-07-19 | 2024-07-31 |  |
| 36 | SIT for using promo code to balance the books(R1.41.1) | 2d | 2024-08-01 | 2024-08-02 |  |
| 37 | UAT for using promo code to balance the books(R1.41.1) | 3d | 2024-08-05 | 2024-08-07 | 36 |
| 38 | Release for using promo code to balance the books(R1.41.1) | 1d | 2024-08-12 | 2024-08-12 |  |
| 39 | Dry Run & Business UAT | 1d | 2024-07-03 | 2024-07-03 |  |
| 40 | Campaign Preparation | 1d | 2024-07-03 | 2024-07-03 |  |

Changed:

| ID | Task | Start | Finish | Duration | Complete | Predecessors |
| --- | --- | --- | --- | --- | --- | --- |
| 12 | **AUTO EARN OPTIMIZATION PLAN** |  | 2024-08-23 → 2024-08-30 (+7d) | 23d → 28d | 8% → 6% |  |
| 13 | **Auto earn optimizations** |  | 2024-08-12 → 2024-08-07 (-5d) | 14d → 11d | 8% → 35% |  |
| 14 | FP invoice API update (WCHAT-14420) |  | 2024-07-24 → 2024-07-31 (+7d) | 1d → 6d |  |  |
| 18 | Release for 14420&15359 | 2024-08-12 → 2024-08-07 (-5d) | 2024-08-12 → 2024-08-07 (-5d) |  |  | none → 17 |
| 19 | **FP certification** |  | 2024-08-23 → 2024-08-16 (-7d) | 23d → 18d |  |  |
| 20 | Execute FP test case | 2024-08-08 → 2024-08-01 (-7d) | 2024-08-09 → 2024-08-02 (-7d) |  |  | none → 15 |
| 21 | Submit FP test case | 2024-08-12 → 2024-08-05 (-7d) | 2024-08-12 → 2024-08-05 (-7d) |  |  | none → 20 |
| 22 | Review test case & back and forth | 2024-08-13 → 2024-08-06 (-7d) | 2024-08-23 → 2024-08-16 (-7d) |  |  | none → 21 |
| 24 | Submit and review documents |  |  |  |  | none → 23 |

## Version 3 (saved 2024-07-25)

Last finish 2024-08-30 → 2024-09-06 (+7d). Complete tasks 4 → 5.

Added:

| ID | Task | Duration | Start | Finish | Predecessors |
| --- | --- | --- | --- | --- | --- |
| 40 | Confirm dry run hotel (1 auto earn, 1 non auto earn) | 18d | 2024-07-15 | 2024-08-07 |  |
| 41 | Prepare test cases for dry run | 3d | 2024-08-08 | 2024-08-12 |  |
| 42 | Execute dry run in hotel & outlets | 4d | 2024-08-13 | 2024-08-16 | 38 |
| 43 | Execute business UAT | 10d | 2024-08-19 | 2024-08-30 |  |
| 45 | Confirm campaign coupon details | 20d | 2024-07-22 | 2024-08-16 |  |
| 46 | Confirm campaign hotels and outlets | 20d | 2024-07-22 | 2024-08-16 |  |
| 47 | Confirm F&B merchant account | 20d | 2024-07-22 | 2024-08-16 |  |
| 48 | Campaign configuration | 15d | 2024-08-19 | 2024-09-06 |  |
| 49 | Confirm cash coupon rollout guidance | 10d | 2024-08-05 | 2024-08-16 |  |
| 50 | Confirm operation guidance | 10d | 2024-08-05 | 2024-08-16 |  |
| 51 | Confirm finance guidance | 10d | 2024-08-05 | 2024-08-16 |  |

Changed:

| ID | Task | Start | Finish | Duration | Complete | Predecessors |
| --- | --- | --- | --- | --- | --- | --- |
| 12 | **AUTO EARN OPTIMIZATION PLAN** |  |  |  | 6% → 5% |  |
| 13 | **Auto earn optimizations** |  | 2024-08-07 → 2024-08-27 (+20d) | 11d → 25d |  |  |
| 17 | UAT for 14420&15359 | 2024-08-05 → 2024-08-08 (+3d) | 2024-08-06 → 2024-08-09 (+3d) |  |  | 16 → none |
| 18 | Release for 14420&15359 | 2024-08-07 → 2024-08-27 (+20d) | 2024-08-07 → 2024-08-27 (+20d) |  |  | 17 → none |
| 19 | **FP certification** |  | 2024-08-16 → 2024-08-23 (+7d) | 18d → 23d |  |  |
| 20 | Execute FP test case | 2024-08-01 → 2024-08-08 (+7d) | 2024-08-02 → 2024-08-09 (+7d) |  |  | 15 → none |
| 21 | Submit FP test case | 2024-08-05 → 2024-08-12 (+7d) | 2024-08-05 → 2024-08-12 (+7d) |  |  |  |
| 22 | Review test case & back and forth | 2024-08-06 → 2024-08-13 (+7d) | 2024-08-16 → 2024-08-23 (+7d) |  |  |  |
| 27 | Verification on Infrasys hotel |  | 2024-08-28 → 2024-08-30 (+2d) | 1d → 3d |  |  |
| 32 | **CASH COUPON** |  | 2024-08-12 → 2024-09-06 (+25d) | 31d → 50d | 45% → 19% |  |
| 36 | SIT for using promo code to balance the books(R1.41.1) |  |  |  |  | none → 35 |
| 39 | **Dry Run & Business UAT** | 2024-07-03 → 2024-07-15 (+12d) | 2024-07-03 → 2024-08-30 (+58d) | 1d → 35d | 0% → 51% |  |
| 44 | **Campaign Preparation** | 2024-07-03 → 2024-07-22 (+19d) | 2024-07-03 → 2024-09-06 (+65d) | 1d → 35d |  |  |

## Version 4 (saved 2024-07-26)

Last finish 2024-09-06 → 2024-09-27 (+21d).

Added:

| ID | Task | Duration | Start | Finish | Predecessors |
| --- | --- | --- | --- | --- | --- |
| 20 | Execute FP test case (in UAT) | 1d | 2024-08-05 | 2024-08-05 |  |
| 40 | Confirm dry run hotel (CANTI & ZHASI) | 18d | 2024-07-15 | 2024-08-07 |  |
| 42 | Set up dry run WeChat merchant account | 2d | 2024-08-13 | 2024-08-14 |  |
| 43 | Configure in Enrollment & deploy to trail | 5d | 2024-08-15 | 2024-08-21 | 42 |
| 44 | Set up dry run hotels' POS | 4d | 2024-08-13 | 2024-08-16 |  |
| 45 | Set up dry run hotels' STO | 4d | 2024-08-13 | 2024-08-16 |  |
| 48 | **POC Phase 2** | 50d | 2024-07-22 | 2024-09-27 |  |
| 50 | Confirm POC hotels and outlets | 36d | 2024-07-22 | 2024-09-09 |  |
| 51 | Set up and confirm F&B merchant account | 5d | 2024-09-10 | 2024-09-16 |  |
| 52 | Configure in Enrollment & deploy to prod | 9d | 2024-09-17 | 2024-09-27 | 51 |
| 53 | Campaign configuration (POS & STO) | 5d | 2024-09-10 | 2024-09-16 |  |
| 57 | WeChat Enrollment POC | 1d | 2024-08-05 | 2024-08-05 |  |
| 58 | Sprint 44 (R1.42) | 1d | 2024-07-01 | 2024-07-01 |  |

Removed: 20 Execute FP test case; 40 Confirm dry run hotel (1 auto earn, 1 non auto earn); 44 Campaign Preparation; 46 Confirm campaign hotels and outlets; 47 Confirm F&B merchant account; 48 Campaign configuration

Changed:

| ID | Task | Start | Finish | Duration | Complete | Predecessors |
| --- | --- | --- | --- | --- | --- | --- |
| 12 | **AUTO EARN OPTIMIZATION PLAN** |  |  |  | 5% → 6% |  |
| 13 | **Auto earn optimizations** |  |  |  | 35% → 38% |  |
| 17 | UAT for 14420&15359 | 2024-08-08 → 2024-08-05 (-3d) | 2024-08-09 → 2024-08-05 (-4d) | 2d → 1d |  |  |
| 19 | **FP certification** |  | 2024-08-23 → 2024-08-16 (-7d) | 23d → 18d |  |  |
| 21 | Submit FP test case | 2024-08-12 → 2024-08-05 (-7d) | 2024-08-12 → 2024-08-05 (-7d) |  |  | Execute FP test case → none |
| 22 | Review test case & back and forth | 2024-08-13 → 2024-08-06 (-7d) | 2024-08-23 → 2024-08-16 (-7d) |  |  |  |
| 32 | **CASH COUPON** |  | 2024-09-06 → 2024-09-27 (+21d) | 50d → 65d | 19% → 15% |  |
| 33 | **Delivery** |  |  |  | 48% → 47% |  |
| 37 | UAT for using promo code to balance the books(R1.41.1) |  | 2024-08-07 → 2024-08-08 (+1d) | 3d → 4d |  |  |
| 39 | **Dry Run & Business UAT** |  | 2024-08-30 → 2024-09-04 (+5d) | 35d → 38d | 51% → 40% |  |
| 41 | Prepare test cases for dry run | 2024-08-08 → 2024-08-13 (+5d) | 2024-08-12 → 2024-08-14 (+2d) | 3d → 2d |  |  |
| 46 | Execute dry run in hotel & outlets | 2024-08-13 → 2024-08-22 (+9d) | 2024-08-16 → 2024-08-28 (+12d) | 4d → 5d |  | 38 → 43 |
| 47 | Execute business UAT | 2024-08-19 → 2024-08-29 (+10d) | 2024-08-30 → 2024-09-04 (+5d) | 10d → 5d |  | none → 46 |
| 54 | Confirm cash coupon rollout guidance |  | 2024-08-16 → 2024-08-30 (+14d) | 10d → 20d |  |  |
| 55 | Confirm operation guidance |  | 2024-08-16 → 2024-08-30 (+14d) | 10d → 20d |  |  |
| 56 | Confirm finance guidance |  | 2024-08-16 → 2024-08-30 (+14d) | 10d → 20d |  |  |

## Version 5 (saved 2024-07-29)

Last finish stays 2024-09-27.

Added:

| ID | Task | Duration | Start | Finish | Predecessors |
| --- | --- | --- | --- | --- | --- |
| 13 | R1.42 DEV | 7d | 2024-08-01 | 2024-08-09 |  |
| 14 | R1.42 SIT | 5d | 2024-08-12 | 2024-08-16 | 13 |
| 15 | R1.42 UAT | 5d | 2024-08-19 | 2024-08-23 | 14 |
| 16 | R1.42 Release | 1d | 2024-08-27 | 2024-08-27 |  |

Removed: 57 WeChat Enrollment POC

Changed:

| ID | Task | Start | Finish | Duration |
| --- | --- | --- | --- | --- |
| 10 | R1.41.1 UAT |  | 2024-08-07 → 2024-08-08 (+1d) | 3d → 4d |
| 12 | **Sprint 44 (R1.42)** | 2024-07-01 → 2024-08-01 (+31d) | 2024-07-01 → 2024-08-27 (+57d) | 1d → 19d |
